# 8x8 Dual Side Cooling Package

Schedule from a web Gantt chart, 2025-11-22 to 2026-12-31.
Every day is a working day

## Schedule

| ID | WBS | Task | Duration | Start | Finish | Predecessors | Complete | Status |
| --- | --- | --- | --- | --- | --- | --- | --- | --- |
| 2 | 1 | Kickoff | 45d | 2025-12-08 | 2026-01-21 |  | 100% | done |
| 3 | 2 | **Process setup** | 177d | 2025-11-22 | 2026-05-17 |  | 38% |  |
| 4 | 2.1 | Wafer process | 31d | 2025-11-22 | 2025-12-22 |  | 100% | done |
| 5 | 2.2 | Design fix | 29d | 2025-12-08 | 2026-01-05 |  | 100% | done |
| 6 | 2.3 | FOPLP sample | 49d | 2026-01-16 | 2026-03-05 |  |  |  |
| 7 | 2.4 | RE (THB 1000H) | 50d | 2026-03-29 | 2026-05-17 |  |  | waiting |
| 8 | 3 | **Pre-qual lot** | 138d | 2026-04-17 | 2026-09-01 |  |  | waiting |
| 9 | 3.1 | RDL Wafer | 31d | 2026-04-17 | 2026-05-17 |  |  | waiting |
| 10 | 3.2 | FOPLP | 36d | 2026-05-18 | 2026-06-22 | 9 |  | waiting |
| 11 | 3.3 | FT | 8d | 2026-06-23 | 2026-06-30 | 10 |  | waiting |
| 12 | 3.4 | RE | 63d | 2026-07-01 | 2026-09-01 | 11 |  | waiting |
| 13 | 4 | **Formal Qual.** | 121d | 2026-09-02 | 2026-12-31 | 12 |  | waiting |
| 14 | 4.1 | RDL Wafer | 32d | 2026-09-02 | 2026-10-03 |  |  | waiting |
| 15 | 4.2 | FOPLP | 44d | 2026-10-04 | 2026-11-16 | 14 |  | waiting |
| 16 | 4.3 | FT | 5d | 2026-11-17 | 2026-11-21 | 15 |  | waiting |
| 17 | 4.4 | RE | 40d | 2026-11-22 | 2026-12-31 | 16 |  | waiting |

Notes:
- 9: FOPLP8X8 方案 (背面漏铜和漏Si) 待台达确认
- 10: 3-FM+2M
